# PlanningValidation

How a schedule from MS Project changed from version to version. A marks actual dates.

## Version 1 (saved 2013-03-17)

Note of the change: Updated planning.

| ID | WBS | Task | Duration | Start | Finish | Complete | Total float | Constraint |
| --- | --- | --- | --- | --- | --- | --- | --- | --- |
| 1 | 1 | **STR3** | 20d | 2013-03-04 A | 2013-03-29 | 30% | 0d |  |
| 2 |  | VTD - Control and Monitor the Batteries Charge | 1d | 2013-03-04 A | 2013-03-04 A | 100% |  |  |
| 3 |  | VTD - Control of microclimate system | 3d | 2013-03-04 A | 2013-03-06 A | 100% |  |  |
| 4 |  | VTD - Parking mode in activate state | 1d | 2013-03-04 A | 2013-03-04 A | 100% |  |  |
| 5 |  | VTD - Manage km-meter and operating times | 1d | 2013-03-04 A | 2013-03-04 A | 100% |  |  |
| 6 |  | VTD - Machine Room Ventilation System | 1d | 2013-03-04 A | 2013-03-04 A | 100% |  |  |
| 7 |  | VTD - Sanding System Management | 3d | 2013-03-04 A | 2013-03-06 A | 100% |  |  |
| 8 |  | VTD - Antislide Protection System (WSP) | 2d | 2013-03-22 | 2013-03-23 |  | 4d | start no earlier than 2013-03-22 |
| 9 |  | VTD - Brake Substitution Control | 3d | 2013-03-20 | 2013-03-22 |  | 5d | start no earlier than 2013-03-20 |
| 10 |  | VTD - Management of auxiliary loads contactors | 3d | 2013-03-20 | 2013-03-22 |  | 5d | start no earlier than 2013-03-20 |
| 11 |  | VTD - Detect and report a fire and fire extinction | 1d | 2013-03-25 | 2013-03-25 |  | 4d | start no earlier than 2013-03-25 |
| 12 |  | VTD - Axle-box bearings temperature control | 1d | 2013-03-25 | 2013-03-25 |  | 4d | start no earlier than 2013-03-25 |
| 13 |  | VTD - Bring Train into Service. Part 2 - Selection of active section (cab) | 2d | 2013-03-26 | 2013-03-27 |  | 2d | start no earlier than 2013-03-26 |
| 14 |  | VTD - Develop Driving Orders | 4d | 2013-03-13 A | 2013-03-18 | 75% |  | start no earlier than 2013-03-13 |
| 15 |  | VTD - Provision and Management of 110 V Supply | 2d | 2013-03-26 | 2013-03-27 |  | 2d | start no earlier than 2013-03-26 |
| 16 |  | VTD - Indicate Locomotive Presence (Acoustic Way) | 1d | 2013-03-25 | 2013-03-25 |  | 4d | start no earlier than 2013-03-25 |
| 17 |  | VTD - Measure and Indicate the Train Speed | 1d | 2013-03-23 | 2013-03-23 |  | 4d | start no earlier than 2013-03-23 |
| 18 |  | VTD - Parking brake control | 3d | 2013-03-26 | 2013-03-28 |  | 1d | start no earlier than 2013-03-26 |
| 19 |  | VTD - Compressed Air Production | 2d | 2013-03-18 | 2013-03-19 |  | 8d | start no earlier than 2013-03-18 |
| 20 |  | VTD - Manage the high voltage configuration (Desk control) | 1d | 2013-03-19 | 2013-03-19 |  | 8d | start no earlier than 2013-03-19 |
| 21 |  | VTD - Compressed Air Distribution | 2d | 2013-03-20 | 2013-03-21 |  | 6d | start no earlier than 2013-03-20 |
| 22 |  | VTD - Control the circuit breaker (Desk control) | 1d | 2013-03-29 | 2013-03-29 |  | 0d | start no earlier than 2013-03-29 |
| 23 |  | VTD - Manage the pantographs (Desk control) | 1d | 2013-03-29 | 2013-03-29 |  | 0d | start no earlier than 2013-03-29 |
| 24 |  | VTD - Grounding of the locomotive | 1d | 2013-03-29 | 2013-03-29 |  | 0d | start no earlier than 2013-03-29 |
| 25 |  | VTD - Pneumatic brake control | 2d | 2013-03-18 | 2013-03-19 |  | 8d | start no earlier than 2013-03-18 |
| 26 |  | VTD - Tape operating data | 1d | 2013-03-28 | 2013-03-28 |  | 1d | start no earlier than 2013-03-28 |
| 27 |  | VTD - Broadcast the time | 1d | 2013-03-28 | 2013-03-28 |  | 1d | start no earlier than 2013-03-28 |
| 28 |  | VTD - Generate Sounds | 1d | 2013-03-23 | 2013-03-23 |  | 4d | start no earlier than 2013-03-23 |
| 29 |  | VTD - Administrate locomotive topology (HMI Part) | 1d | 2013-03-04 A | 2013-03-04 A | 100% |  |  |

## Version 2 (saved 2013-03-23)

Note of the change: Update of validation planning.

Last finish 2013-03-29 → 2013-04-01 (+3d). Complete tasks 7 → 10.

Added:

| ID | Task | Duration | Start | Finish | Predecessors | Constraint | Resources |
| --- | --- | --- | --- | --- | --- | --- | --- |
| 30 | Test on Testbench | 1d? | 2013-03-04 | 2013-03-04 |  |  |  |
| 31 | STR3 - RUN - Control and Monitor the Batteries Charge | 1d | 2013-04-01 | 2013-04-01 | 59 | start no earlier than 2013-04-01 | Valid-FLO |
| 32 | STR3 - RUN - Control of microclimate system | 1d | 2013-03-25 | 2013-03-25 | 59 | start no earlier than 2013-03-25 | Valid-FLO |
| 33 | STR3 - RUN - Parking mode in activate state | 2d | 2013-03-04 | 2013-03-05 |  |  |  |
| 34 | STR3 - RUN - Manage km-meter and operating times | 1d | 2013-03-28 | 2013-03-28 | 59 | start no earlier than 2013-03-28 | Valid-FLO |
| 35 | STR3 - RUN - Machine Room Ventilation System | 1d | 2013-03-26 | 2013-03-26 | 59 | start no earlier than 2013-03-26 | Valid-FLO |
| 36 | STR3 - RUN - Sanding System Management | 1d | 2013-03-27 | 2013-03-27 | 59 | start no earlier than 2013-03-27 | Valid-FLO |
| 37 | STR3 - RUN - Antislide Protection System (WSP) | 1d | 2013-03-30 | 2013-03-30 | 59 | start no earlier than 2013-03-30 | Valid-FLO |
| 38 | STR3 - RUN - Brake Substitution Control | 2d? | 2013-03-04 | 2013-03-05 |  |  |  |
| 39 | STR3 - RUN - Management of auxiliary loads contactors | 2d | 2013-03-04 | 2013-03-05 |  |  |  |
| 40 | STR3 - RUN - Detect and report a fire and fire extinction | 1d | 2013-03-29 | 2013-03-29 | 59 | start no earlier than 2013-03-29 | Valid-FLO |
| 41 | STR3 - RUN - Axle-box bearings temperature control | 1d | 2013-03-04 | 2013-03-04 |  |  |  |
| 42 | STR3 - RUN - Bring Train into Service. Part 2 - Selection of active section (cab) | 1d | 2013-03-04 | 2013-03-04 |  |  |  |
| 43 | VTD - Develop Driving Orders | 1d | 2013-03-04 | 2013-03-04 |  |  |  |
| 44 | VTD - Provision and Management of 110 V Supply | 1d | 2013-03-04 | 2013-03-04 |  |  |  |
| 45 | VTD - Indicate Locomotive Presence (Acoustic Way) | 1d | 2013-03-04 | 2013-03-04 |  |  |  |
| 46 | VTD - Measure and Indicate the Train Speed | 1d | 2013-03-04 | 2013-03-04 |  |  |  |
| 47 | VTD - Parking brake control | 1d | 2013-03-04 | 2013-03-04 |  |  |  |
| 48 | VTD - Compressed Air Production | 1d | 2013-03-04 | 2013-03-04 |  |  |  |
| 49 | VTD - Manage the high voltage configuration (Desk control) | 1d | 2013-03-04 | 2013-03-04 |  |  |  |
| 50 | VTD - Compressed Air Distribution | 1d | 2013-03-04 | 2013-03-04 |  |  |  |
| 51 | VTD - Control the circuit breaker (Desk control) | 1d | 2013-03-04 | 2013-03-04 |  |  |  |
| 52 | VTD - Manage the pantographs (Desk control) | 1d | 2013-03-04 | 2013-03-04 |  |  |  |
| 53 | VTD - Grounding of the locomotive | 1d | 2013-03-04 | 2013-03-04 |  |  |  |
| 54 | VTD - Pneumatic brake control | 1d | 2013-03-04 | 2013-03-04 |  |  |  |
| 55 | VTD - Tape operating data | 1d | 2013-03-04 | 2013-03-04 |  |  |  |
| 56 | VTD - Broadcast the time | 1d | 2013-03-04 | 2013-03-04 |  |  |  |
| 57 | VTD - Generate Sounds | 1d | 2013-03-04 | 2013-03-04 |  |  |  |
| 58 | VTD - Administrate locomotive topology (HMI Part) | 1d | 2013-03-04 | 2013-03-04 |  |  |  |
| 59 | 0.1.1 | 0d | 2013-03-04 | 2013-03-04 |  |  |  |

Changed:

| ID | Task | Start | Finish | Duration | Complete | Total float | Other |
| --- | --- | --- | --- | --- | --- | --- | --- |
| 1 | **STR3** | 2013-03-04 A → 2013-03-08 A (+4d) | 2013-03-29 → 2013-03-26 (-3d) | 20d → 13d | 30% → 43% | 0d → 4d |  |
| 2 | VTD - Control and Monitor the Batteries Charge | 2013-03-04 A → 2013-03-13 (+9d) | 2013-03-04 A → 2013-03-13 (+9d) |  | 100% → 0% | none → 13d | constraint none → start no earlier than 2013-03-13 |
| 3 | VTD - Control of microclimate system | 2013-03-04 A → 2013-03-11 A (+7d) | 2013-03-06 A → 2013-03-13 A (+7d) |  |  |  | constraint none → start no earlier than 2013-03-11; resources none → Andrei |
| 4 | VTD - Parking mode in activate state | 2013-03-04 A → 2013-03-22 A (+18d) | 2013-03-04 A → 2013-03-25 (+21d) | 1d → 3d | 100% → 50% | none → 5d | constraint none → start no earlier than 2013-03-22; resources none → Andrei |
| 5 | VTD - Manage km-meter and operating times | 2013-03-04 A → 2013-03-19 A (+15d) | 2013-03-04 A → 2013-03-19 A (+15d) |  |  |  | constraint none → start no earlier than 2013-03-19; resources none → Andrei |
| 6 | VTD - Machine Room Ventilation System | 2013-03-04 A → 2013-03-20 A (+16d) | 2013-03-04 A → 2013-03-20 A (+16d) |  |  |  | constraint none → start no earlier than 2013-03-20; resources none → Andrei |
| 7 | VTD - Sanding System Management | 2013-03-04 A → 2013-03-14 A (+10d) | 2013-03-06 A → 2013-03-18 A (+12d) |  |  |  | constraint none → start no earlier than 2013-03-14; resources none → Andrei |
| 8 | VTD - Antislide Protection System (WSP) | 2013-03-22 → 2013-03-23 A (+1d) | 2013-03-23 → 2013-03-26 (+3d) | 2d → 3d | 0% → 33% |  | constraint start no earlier than 2013-03-22 → start no earlier than 2013-03-23 |
| 9 | VTD - Brake Substitution Control | 2013-03-20 → 2013-03-14 (-6d) | 2013-03-22 → 2013-03-18 (-4d) |  |  | 5d → 10d | constraint start no earlier than 2013-03-20 → start no earlier than 2013-03-14; resources Anton → none |
| 10 | VTD - Management of auxiliary loads contactors | 2013-03-20 → 2013-03-18 A (-2d) | 2013-03-22 → 2013-03-20 A (-2d) |  | 0% → 100% | 5d → none | constraint start no earlier than 2013-03-20 → start no earlier than 2013-03-18; resources Andrei → Konstantin |
| 11 | VTD - Detect and report a fire and fire extinction | 2013-03-25 → 2013-03-21 (-4d) | 2013-03-25 → 2013-03-21 (-4d) |  |  | 4d → 7d | constraint start no earlier than 2013-03-25 → start no earlier than 2013-03-21; resources Andrei → none |
| 12 | VTD - Axle-box bearings temperature control | 2013-03-25 → 2013-03-14 (-11d) | 2013-03-25 → 2013-03-14 (-11d) |  |  | 4d → 12d | constraint start no earlier than 2013-03-25 → start no earlier than 2013-03-14; resources Konstantin → none |
| 13 | VTD - Bring Train into Service. Part 2 - Selection of active section (cab) | 2013-03-26 → 2013-03-20 (-6d) | 2013-03-27 → 2013-03-21 (-6d) |  |  | 2d → 7d | constraint start no earlier than 2013-03-26 → start no earlier than 2013-03-20; resources Konstantin → none |
| 14 | VTD - Develop Driving Orders |  | 2013-03-18 A |  | 75% → 100% |  |  |
| 15 | VTD - Provision and Management of 110 V Supply | 2013-03-26 → 2013-03-15 (-11d) | 2013-03-27 → 2013-03-18 (-9d) |  |  | 2d → 10d | constraint start no earlier than 2013-03-26 → start no earlier than 2013-03-15; resources Anton → none |
| 16 | VTD - Indicate Locomotive Presence (Acoustic Way) | 2013-03-25 → 2013-03-18 (-7d) | 2013-03-25 → 2013-03-18 (-7d) |  |  | 4d → 10d | constraint start no earlier than 2013-03-25 → start no earlier than 2013-03-18; resources Anton → none |
| 17 | VTD - Measure and Indicate the Train Speed | 2013-03-23 A | 2013-03-23 A |  | 0% → 100% | 4d → none |  |
| 18 | VTD - Parking brake control | 2013-03-26 → 2013-03-18 (-8d) | 2013-03-28 → 2013-03-20 (-8d) |  |  | 1d → 8d | constraint start no earlier than 2013-03-26 → start no earlier than 2013-03-18; resources Andrei → none |
| 19 | VTD - Compressed Air Production |  |  |  |  | 8d → 9d | resources Konstantin → none |
| 20 | VTD - Manage the high voltage configuration (Desk control) | 2013-03-19 A | 2013-03-19 A |  | 0% → 100% | 8d → none |  |
| 21 | VTD - Compressed Air Distribution | 2013-03-20 → 2013-03-22 (+2d) | 2013-03-21 → 2013-03-25 (+4d) |  |  | 6d → 5d | constraint start no earlier than 2013-03-20 → start no earlier than 2013-03-22; resources Konstantin → none |
| 22 | VTD - Control the circuit breaker (Desk control) | 2013-03-29 → 2013-03-08 (-21d) | 2013-03-29 → 2013-03-08 (-21d) |  |  | 0d → 16d | constraint start no earlier than 2013-03-29 → start no earlier than 2013-03-08; resources Anton → none |
| 23 | VTD - Manage the pantographs (Desk control) | 2013-03-29 → 2013-03-18 (-11d) | 2013-03-29 → 2013-03-18 (-11d) |  |  | 0d → 10d | constraint start no earlier than 2013-03-29 → start no earlier than 2013-03-18; resources Konstantin → none |
| 24 | VTD - Grounding of the locomotive | 2013-03-29 → 2013-03-12 (-17d) | 2013-03-29 → 2013-03-12 (-17d) |  |  | 0d → 14d | constraint start no earlier than 2013-03-29 → start no earlier than 2013-03-12; resources Andrei → none |
| 25 | VTD - Pneumatic brake control |  |  |  |  | 8d → 9d | resources Andrei → none |
| 26 | VTD - Tape operating data | 2013-03-28 → 2013-03-15 A (-13d) | 2013-03-28 → 2013-03-15 A (-13d) |  | 0% → 100% | 1d → none | constraint start no earlier than 2013-03-28 → start no earlier than 2013-03-15; resources Anton → Konstantin |
| 27 | VTD - Broadcast the time | 2013-03-28 → 2013-03-18 (-10d) | 2013-03-28 → 2013-03-18 (-10d) |  |  | 1d → 10d | constraint start no earlier than 2013-03-28 → start no earlier than 2013-03-18; resources Konstantin → none |
| 28 | VTD - Generate Sounds | 2013-03-23 → 2013-03-22 (-1d) | 2013-03-23 → 2013-03-22 (-1d) |  |  | 4d → 6d | constraint start no earlier than 2013-03-23 → start no earlier than 2013-03-22; resources Andrei → none |
| 29 | VTD - Administrate locomotive topology (HMI Part) | 2013-03-04 A → 2013-03-20 A (+16d) | 2013-03-04 A → 2013-03-20 A (+16d) |  |  |  | constraint none → start no earlier than 2013-03-20; resources none → Anton |

## Version 3 (saved 2013-03-24)

Note of the change: Planning filled with Nastya

Last finish 2013-04-01 → 2013-04-12 (+11d).

Added:

| ID | Task | Duration | Start | Finish |
| --- | --- | --- | --- | --- |
| 60 | 3.0.0 | 0d | 2013-04-01 | 2013-04-01 |

Changed:

| ID | Task | Start | Finish | Duration | Total float | Predecessors | Other |
| --- | --- | --- | --- | --- | --- | --- | --- |
| 1 | **STR3** | 2013-03-08 A → 2013-03-11 A (+3d) | 2013-03-26 → 2013-04-04 (+9d) | 13d → 19d | 4d → 6d |  |  |
| 2 | VTD - Control and Monitor the Batteries Charge | 2013-03-13 → 2013-03-29 (+16d) | 2013-03-13 → 2013-03-29 (+16d) |  | 13d → 10d |  | constraint start no earlier than 2013-03-13 → start no earlier than 2013-03-29; resources none → Olga |
| 3 | VTD - Control of microclimate system |  |  |  |  |  | constraint start no earlier than 2013-03-11 → none |
| 4 | VTD - Parking mode in activate state |  |  |  | 5d → 12d |  | constraint start no earlier than 2013-03-22 → none |
| 5 | VTD - Manage km-meter and operating times |  |  |  |  |  | constraint start no earlier than 2013-03-19 → none |
| 6 | VTD - Machine Room Ventilation System |  |  |  |  |  | constraint start no earlier than 2013-03-20 → none |
| 7 | VTD - Sanding System Management |  |  |  |  |  | constraint start no earlier than 2013-03-14 → none |
| 8 | VTD - Antislide Protection System (WSP) |  |  |  | 4d → 13d |  | constraint start no earlier than 2013-03-23 → none; resources Konstantin → Olga |
| 9 | VTD - Brake Substitution Control | 2013-03-14 → 2013-03-26 (+12d) | 2013-03-18 → 2013-03-28 (+10d) |  | 10d → 11d |  | constraint start no earlier than 2013-03-14 → start no earlier than 2013-03-26; resources none → Andrei |
| 10 | VTD - Management of auxiliary loads contactors |  |  |  |  |  | constraint start no earlier than 2013-03-18 → none; resources Konstantin → Olga |
| 11 | VTD - Detect and report a fire and fire extinction | 2013-03-21 → 2013-03-28 (+7d) | 2013-03-21 → 2013-03-28 (+7d) |  | 7d → 11d |  | constraint start no earlier than 2013-03-21 → start no earlier than 2013-03-28; resources none → Olga |
| 12 | VTD - Axle-box bearings temperature control | 2013-03-14 → 2013-03-27 (+13d) | 2013-03-14 → 2013-03-27 (+13d) |  |  |  | constraint start no earlier than 2013-03-14 → start no earlier than 2013-03-27; resources none → Olga |
| 13 | VTD - Bring Train into Service. Part 2 - Selection of active section (cab) | 2013-03-20 → 2013-03-25 (+5d) | 2013-03-21 → 2013-03-26 (+5d) |  | 7d → 12d |  | constraint start no earlier than 2013-03-20 → start no earlier than 2013-03-25; resources none → Anton |
| 15 | VTD - Provision and Management of 110 V Supply | 2013-03-15 → 2013-03-29 (+14d) | 2013-03-18 → 2013-03-30 (+12d) |  | 10d → 7d |  | constraint start no earlier than 2013-03-15 → start no earlier than 2013-03-29; resources none → Andrei |
| 16 | VTD - Indicate Locomotive Presence (Acoustic Way) | 2013-03-18 → 2013-03-30 (+12d) | 2013-03-18 → 2013-03-30 (+12d) |  | 10d → 8d |  | constraint start no earlier than 2013-03-18 → start no earlier than 2013-03-30; resources none → Anton |
| 17 | VTD - Measure and Indicate the Train Speed |  |  |  |  |  | constraint start no earlier than 2013-03-23 → none |
| 18 | VTD - Parking brake control | 2013-03-18 → 2013-03-27 (+9d) | 2013-03-20 → 2013-03-29 (+9d) |  |  |  | constraint start no earlier than 2013-03-18 → start no earlier than 2013-03-27; resources none → Anton |
| 19 | VTD - Compressed Air Production | 2013-03-18 → 2013-04-01 (+14d) | 2013-03-19 → 2013-04-02 (+14d) |  | 9d → 6d |  | constraint start no earlier than 2013-03-18 → start no earlier than 2013-04-01; resources none → Andrei |
| 20 | VTD - Manage the high voltage configuration (Desk control) |  |  |  |  |  | constraint start no earlier than 2013-03-19 → none |
| 21 | VTD - Compressed Air Distribution | 2013-03-22 → 2013-04-03 (+12d) | 2013-03-25 → 2013-04-04 (+10d) |  | 5d → 4d |  | constraint start no earlier than 2013-03-22 → start no earlier than 2013-04-03; resources none → Andrei |
| 22 | VTD - Control the circuit breaker (Desk control) | 2013-03-08 → 2013-03-30 (+22d) | 2013-03-08 → 2013-03-30 (+22d) |  | 16d → 8d |  | constraint start no earlier than 2013-03-08 → start no earlier than 2013-03-30; resources none → Olga |
| 23 | VTD - Manage the pantographs (Desk control) | 2013-03-18 → 2013-04-01 (+14d) | 2013-03-18 → 2013-04-01 (+14d) |  | 10d → 8d |  | constraint start no earlier than 2013-03-18 → start no earlier than 2013-04-01; resources none → Olga |
| 24 | VTD - Grounding of the locomotive | 2013-03-12 → 2013-04-04 (+23d) | 2013-03-12 → 2013-04-04 (+23d) |  | 14d → 5d |  | constraint start no earlier than 2013-03-12 → start no earlier than 2013-04-04; resources none → Anton |
| 25 | VTD - Pneumatic brake control | 2013-03-18 → 2013-04-01 (+14d) | 2013-03-19 → 2013-04-02 (+14d) |  | 9d → 5d |  | constraint start no earlier than 2013-03-18 → start no earlier than 2013-04-01; resources none → Anton |
| 26 | VTD - Tape operating data |  |  |  |  |  | constraint start no earlier than 2013-03-15 → none; resources Konstantin → Olga |
| 27 | VTD - Broadcast the time | 2013-03-18 → 2013-04-02 (+15d) | 2013-03-18 → 2013-04-02 (+15d) |  | 10d → 7d |  | constraint start no earlier than 2013-03-18 → start no earlier than 2013-04-02; resources none → Olga |
| 28 | VTD - Generate Sounds | 2013-03-22 → 2013-04-03 (+12d) | 2013-03-22 → 2013-04-03 (+12d) |  |  |  | constraint start no earlier than 2013-03-22 → start no earlier than 2013-04-03; resources none → Anton |
| 29 | VTD - Administrate locomotive topology (HMI Part) |  |  |  |  |  | constraint start no earlier than 2013-03-20 → none |
| 31 | STR3 - RUN - Control and Monitor the Batteries Charge | 2013-04-01 → 2013-04-09 (+8d) | 2013-04-01 → 2013-04-09 (+8d) |  | 0d → 3d |  | constraint start no earlier than 2013-04-01 → start no earlier than 2013-04-09 |
| 32 | STR3 - RUN - Control of microclimate system |  |  | 1d → 0.5d | 5d → 14.12d |  |  |
| 33 | STR3 - RUN - Parking mode in activate state | 2013-03-04 → 2013-04-10 (+37d) | 2013-03-05 → 2013-04-11 (+37d) |  |  | none → 4 | resources none → Valid-FLO |
| 38 | STR3 - RUN - Brake Substitution Control | 2013-03-04 → 2013-04-04 (+31d) | 2013-03-05 → 2013-04-05 (+31d) | 2d? → 2d |  |  | resources none → Valid-FLO |
| 39 | STR3 - RUN - Management of auxiliary loads contactors | 2013-03-04 → 2013-04-01 (+28d) | 2013-03-05 → 2013-04-02 (+28d) | 2d → 1d |  | none → 60, 10 | resources none → Valid-FLO |
| 41 | STR3 - RUN - Axle-box bearings temperature control | 2013-03-04 → 2013-04-08 (+35d) | 2013-03-04 → 2013-04-08 (+35d) |  | none → 4d |  | constraint none → start no earlier than 2013-04-08; resources none → Valid-FLO |
| 42 | STR3 - RUN - Bring Train into Service. Part 2 - Selection of active section (cab) | 2013-03-04 → 2013-04-08 (+35d) | 2013-03-04 → 2013-04-08 (+35d) |  | none → 4d | none → 13, 60 | constraint none → start no earlier than 2013-04-08; resources none → Valid-FLO |
| 43 | STR2 - RUN - Develop Driving Orders | 2013-03-04 → 2013-03-25 (+21d) | 2013-03-04 → 2013-03-27 (+23d) | 1d → 3d | none → 12d | none → 14 | was named VTD - Develop Driving Orders; constraint none → start no earlier than 2013-03-25 |
| 44 | STR2 - RUN - Provision and Management of 110 V Supply | 2013-03-04 → 2013-04-01 (+28d) | 2013-03-04 → 2013-04-02 (+29d) | 1d → 2d | none → 8d | none → 15 | was named VTD - Provision and Management of 110 V Supply; constraint none → start no earlier than 2013-04-01 |
| 45 | STR2 - RUN - Indicate Locomotive Presence (Acoustic Way) | 2013-03-04 → 2013-04-01 (+28d) | 2013-03-04 → 2013-04-01 (+28d) |  | none → 9d | none → 16 | was named VTD - Indicate Locomotive Presence (Acoustic Way); constraint none → start no earlier than 2013-03-26 |
| 46 | STR2 - RUN - Measure and Indicate the Train Speed | 2013-03-04 → 2013-04-03 (+30d) | 2013-03-04 → 2013-04-03 (+30d) |  | none → 7d | none → 17 | was named VTD - Measure and Indicate the Train Speed; constraint none → start no earlier than 2013-04-03; resources none → Valid-FLO |
| 47 | STR2 - RUN - Parking brake control | 2013-03-04 → 2013-04-05 (+32d) | 2013-03-04 → 2013-04-08 (+35d) | 1d → 2d | none → 4d | none → 18 | was named VTD - Parking brake control; constraint none → start no earlier than 2013-04-05 |
| 48 | STR2 - RUN - Compressed Air Production | 2013-03-04 → 2013-04-03 (+30d) | 2013-03-04 → 2013-04-04 (+31d) | 1d → 2d | none → 6d | none → 19 | was named VTD - Compressed Air Production; constraint none → start no earlier than 2013-04-03 |
| 49 | STR2 - RUN - Manage the high voltage configuration (Desk control) | 2013-03-04 → 2013-03-25 (+21d) | 2013-03-04 → 2013-03-25 (+21d) |  | none → 14d | none → 20 | was named VTD - Manage the high voltage configuration (Desk control); constraint none → start no earlier than 2013-03-25 |
| 50 | STR2 - RUN - Compressed Air Distribution | 2013-03-04 → 2013-04-05 (+32d) | 2013-03-04 → 2013-04-08 (+35d) | 1d → 2d | none → 4d | none → 21 | was named VTD - Compressed Air Distribution; constraint none → start no earlier than 2013-03-27 |
| 51 | STR2 - RUN - Control the circuit breaker (Desk control) | 2013-03-04 → 2013-04-01 (+28d) | 2013-03-04 → 2013-04-01 (+28d) |  | none → 9d | none → 22 | was named VTD - Control the circuit breaker (Desk control); constraint none → start no earlier than 2013-03-26 |
| 52 | STR2 - RUN - Manage the pantographs (Desk control) | 2013-03-04 → 2013-04-02 (+29d) | 2013-03-04 → 2013-04-02 (+29d) |  | none → 8d | none → 23 | was named VTD - Manage the pantographs (Desk control); constraint none → start no earlier than 2013-03-26 |
| 53 | STR2 - RUN - Grounding of the locomotive | 2013-03-04 → 2013-04-05 (+32d) | 2013-03-04 → 2013-04-05 (+32d) |  | none → 5d | none → 24 | was named VTD - Grounding of the locomotive; constraint none → start no earlier than 2013-03-26 |
| 54 | STR2 - RUN - Pneumatic brake control | 2013-03-04 → 2013-04-03 (+30d) | 2013-03-04 → 2013-04-05 (+32d) | 1d → 3d | none → 5d | none → 25 | was named VTD - Pneumatic brake control; constraint none → start no earlier than 2013-03-29 |
| 55 | STR2 - RUN - Tape operating data | 2013-03-04 → 2013-03-26 (+22d) | 2013-03-04 → 2013-03-26 (+22d) |  | none → 13d | none → 26 | was named VTD - Tape operating data; constraint none → start no earlier than 2013-03-26 |
| 56 | STR2 - RUN - Broadcast the time | 2013-03-04 → 2013-04-03 (+30d) | 2013-03-04 → 2013-04-03 (+30d) |  | none → 7d | none → 27 | was named VTD - Broadcast the time; constraint none → start no earlier than 2013-04-01 |
| 57 | STR2 - RUN - Generate Sounds | 2013-03-04 → 2013-04-12 (+39d) | 2013-03-04 → 2013-04-12 (+39d) |  | none → 0d | none → 28 | was named VTD - Generate Sounds; constraint none → start no earlier than 2013-04-12; resources none → Valid-FLO |
| 58 | STR2 - RUN - Administrate locomotive topology (HMI Part) | 2013-03-04 → 2013-04-05 (+32d) | 2013-03-04 → 2013-04-05 (+32d) |  | none → 5d | none → 29 | was named VTD - Administrate locomotive topology (HMI Part); constraint none → start no earlier than 2013-04-05 |
| 59 | 0.1.1 | 2013-03-04 → 2013-03-25 (+21d) | 2013-03-04 → 2013-03-25 (+21d) |  |  |  |  |

## Version 4 (saved 2013-03-25)

Note of the change: New planning.

Last finish 2013-04-12 → 2013-04-25 (+13d).

Changed:

| ID | Task | Start | Finish | Duration | Total float | Predecessors | Other |
| --- | --- | --- | --- | --- | --- | --- | --- |
| 13 | VTD - Bring Train into Service. Part 2 - Selection of active section (cab) | 2013-03-25 → 2013-04-02 (+8d) | 2013-03-26 → 2013-04-03 (+8d) |  | 12d → 15d |  | constraint start no earlier than 2013-03-25 → start no earlier than 2013-04-02 |
| 16 | VTD - Indicate Locomotive Presence (Acoustic Way) | 2013-03-30 → 2013-03-25 (-5d) | 2013-03-30 → 2013-03-25 (-5d) |  | 8d → 22d |  | constraint start no earlier than 2013-03-30 → start no earlier than 2013-03-25 |
| 25 | VTD - Pneumatic brake control | 2013-04-01 → 2013-03-30 (-2d) | 2013-04-02 → 2013-04-01 (-1d) |  | 5d → 14d |  | constraint start no earlier than 2013-04-01 → start no earlier than 2013-03-30 |
| 28 | VTD - Generate Sounds | 2013-04-03 → 2013-03-26 (-8d) | 2013-04-03 → 2013-03-26 (-8d) |  | 6d → 21d |  | constraint start no earlier than 2013-04-03 → start no earlier than 2013-03-26 |
| 31 | STR3 - RUN - Control and Monitor the Batteries Charge |  |  |  | 3d → 12d | 59 → 59, 2 |  |
| 32 | STR3 - RUN - Control of microclimate system |  |  |  | 14.12d → 23.12d | 59 → 59, 3 |  |
| 34 | STR3 - RUN - Manage km-meter and operating times |  |  |  | 11d → 20d | 59 → 59, 5 |  |
| 35 | STR3 - RUN - Machine Room Ventilation System |  |  |  | 13d → 22d | 59 → 59, 6 |  |
| 36 | STR3 - RUN - Sanding System Management |  |  |  | 12d → 21d | 59 → 59, 7 |  |
| 37 | STR3 - RUN - Antislide Protection System (WSP) |  |  |  | 9d → 18d | 59 → 59, 8 |  |
| 38 | STR3 - RUN - Brake Substitution Control | 2013-04-04 → 2013-04-01 (-3d) | 2013-04-05 → 2013-04-03 (-2d) |  |  | none → 60, 9 |  |
| 39 | STR3 - RUN - Management of auxiliary loads contactors | 2013-04-01 → 2013-04-15 (+14d) | 2013-04-02 → 2013-04-16 (+14d) | 1d → 2d |  |  |  |
| 40 | STR3 - RUN - Detect and report a fire and fire extinction |  |  |  | 10d → 19d | 59 → 59, 11 |  |
| 41 | STR3 - RUN - Axle-box bearings temperature control |  |  |  | 4d → 13d | none → 60, 12 |  |
| 42 | STR3 - RUN - Bring Train into Service. Part 2 - Selection of active section (cab) | 2013-04-08 → 2013-04-05 (-3d) | 2013-04-08 → 2013-04-05 (-3d) |  | 4d → 14d |  | constraint start no earlier than 2013-04-08 → start no earlier than 2013-04-05 |
| 43 | STR2 - RUN - Develop Driving Orders | 2013-03-25 → 2013-04-15 (+21d) | 2013-03-27 → 2013-04-17 (+21d) |  | 12d → 6d | 14 → 14, 60 | constraint start no earlier than 2013-03-25 → start no earlier than 2013-04-15; resources none → Valid-FLO |
| 44 | STR2 - RUN - Provision and Management of 110 V Supply | 2013-04-01 → 2013-04-19 (+18d) | 2013-04-02 → 2013-04-22 (+20d) |  | 8d → 3d | 15 → 15, 60 | constraint start no earlier than 2013-04-01 → start no earlier than 2013-04-19; resources none → Valid-FLO |
| 45 | STR2 - RUN - Indicate Locomotive Presence (Acoustic Way) | 2013-04-01 → 2013-04-23 (+22d) | 2013-04-01 → 2013-04-23 (+22d) |  | 9d → 2d | 16 → 16, 60 | constraint start no earlier than 2013-03-26 → start no earlier than 2013-04-23; resources none → Valid-FLO |
| 46 | STR2 - RUN - Measure and Indicate the Train Speed | 2013-04-03 → 2013-04-04 (+1d) | 2013-04-03 → 2013-04-04 (+1d) |  | 7d → 15d | 17 → 17, 60 | constraint start no earlier than 2013-04-03 → start no earlier than 2013-04-04 |
| 47 | STR2 - RUN - Parking brake control | 2013-04-05 → 2013-04-24 (+19d) | 2013-04-08 → 2013-04-25 (+17d) |  | 4d → 0d | 18 → 18, 60 | constraint start no earlier than 2013-04-05 → start no earlier than 2013-04-24; resources none → Valid-FLO |
| 48 | STR2 - RUN - Compressed Air Production | 2013-04-03 → 2013-04-17 (+14d) | 2013-04-04 → 2013-04-18 (+14d) |  | 6d → 5d | 19 → 19, 60 | constraint start no earlier than 2013-04-03 → start no earlier than 2013-04-17; resources none → Valid-FLO |
| 49 | STR2 - RUN - Manage the high voltage configuration (Desk control) | 2013-03-25 → 2013-04-23 (+29d) | 2013-03-25 → 2013-04-23 (+29d) |  | 14d → 2d | 20 → 20, 60 | constraint start no earlier than 2013-03-25 → start no earlier than 2013-04-23; resources none → Valid-FLO |
| 50 | STR2 - RUN - Compressed Air Distribution | 2013-04-05 → 2013-04-19 (+14d) | 2013-04-08 → 2013-04-22 (+14d) |  | 4d → 3d | 21 → 21, 60 | constraint start no earlier than 2013-03-27 → start no earlier than 2013-04-19; resources none → Valid-FLO |
| 51 | STR2 - RUN - Control the circuit breaker (Desk control) | 2013-04-01 → 2013-04-24 (+23d) | 2013-04-01 → 2013-04-24 (+23d) |  | 9d → 1d | 22 → 22, 60 | constraint start no earlier than 2013-03-26 → start no earlier than 2013-04-24; resources none → Valid-FLO |
| 52 | STR2 - RUN - Manage the pantographs (Desk control) | 2013-04-02 → 2013-04-25 (+23d) | 2013-04-02 → 2013-04-25 (+23d) |  | 8d → 0d | 23 → 23, 60 | constraint start no earlier than 2013-03-26 → start no earlier than 2013-04-25; resources none → Valid-FLO |
| 53 | STR2 - RUN - Grounding of the locomotive | 2013-04-05 → 2013-04-12 (+7d) | 2013-04-05 → 2013-04-12 (+7d) |  | 5d → 9d | 24 → 24, 60 | constraint start no earlier than 2013-03-26 → start no earlier than 2013-04-12; resources none → Valid-FLO |
| 54 | STR2 - RUN - Pneumatic brake control | 2013-04-03 → 2013-04-08 (+5d) | 2013-04-05 → 2013-04-10 (+5d) |  | 5d → 11d | 25 → 25, 60 | constraint start no earlier than 2013-03-29 → start no earlier than 2013-04-08; resources none → Valid-FLO |
| 55 | STR2 - RUN - Tape operating data | 2013-03-26 → 2013-04-05 (+10d) | 2013-03-26 → 2013-04-05 (+10d) |  | 13d → 14d | 26 → 26, 60 | constraint start no earlier than 2013-03-26 → start no earlier than 2013-04-05; resources none → Valid-FLO |
| 56 | STR2 - RUN - Broadcast the time | 2013-04-03 → 2013-04-04 (+1d) | 2013-04-03 → 2013-04-04 (+1d) |  | 7d → 15d | 27 → 27, 59 | constraint start no earlier than 2013-04-01 → start no earlier than 2013-04-04; resources none → Valid-FLO |
| 57 | STR2 - RUN - Generate Sounds |  |  |  | 0d → 9d | 28 → 28, 60 |  |
| 58 | STR2 - RUN - Administrate locomotive topology (HMI Part) | 2013-04-05 → 2013-04-11 (+6d) | 2013-04-05 → 2013-04-11 (+6d) |  | 5d → 10d | 29 → 29, 60 | constraint start no earlier than 2013-04-05 → start no earlier than 2013-04-11; resources none → Valid-FLO |

## Version 5 (saved 2013-03-25)

Note of the change: New version of planning, after discussion with Francois

Last finish 2013-04-25 → 2013-04-30 (+5d).

Changed:

| ID | Task | Start | Finish | Duration | Complete | Total float | Predecessors | Other |
| --- | --- | --- | --- | --- | --- | --- | --- | --- |
| 1 | **STR3** |  |  |  | 43% → 42% | 14d → 17d |  | baseline start none → 2013-03-11; baseline finish none → 2013-04-04 |
| 2 | VTD - Control and Monitor the Batteries Charge |  |  |  |  | 18d → 21d |  | baseline start none → 2013-03-29; baseline finish none → 2013-03-29 |
| 3 | VTD - Control of microclimate system |  |  |  |  |  |  | baseline start none → 2013-03-11; baseline finish none → 2013-03-13 |
| 4 | VTD - Parking mode in activate state |  |  |  |  | 21d → 24d |  | baseline start none → 2013-03-22; baseline finish none → 2013-03-25 |
| 5 | VTD - Manage km-meter and operating times |  |  |  |  |  |  | baseline start none → 2013-03-19; baseline finish none → 2013-03-19 |
| 6 | VTD - Machine Room Ventilation System |  |  |  |  |  |  | baseline start none → 2013-03-20; baseline finish none → 2013-03-20 |
| 7 | VTD - Sanding System Management |  |  |  |  |  |  | baseline start none → 2013-03-14; baseline finish none → 2013-03-18 |
| 8 | VTD - Antislide Protection System (WSP) |  |  |  |  | 21d → 24d |  | baseline start none → 2013-03-23; baseline finish none → 2013-03-26 |
| 9 | VTD - Brake Substitution Control | 2013-03-26 → 2013-04-02 (+7d) | 2013-03-28 → 2013-04-04 (+7d) |  |  | 18d → 16d |  | constraint start no earlier than 2013-03-26 → start no earlier than 2013-04-02; baseline start none → 2013-04-02; baseline finish none → 2013-04-04 |
| 10 | VTD - Management of auxiliary loads contactors |  |  |  |  |  |  | baseline start none → 2013-03-18; baseline finish none → 2013-03-20 |
| 11 | VTD - Detect and report a fire and fire extinction | 2013-03-28 → 2013-03-25 (-3d) | 2013-03-28 → 2013-03-25 (-3d) |  |  | 19d → 25d |  | constraint start no earlier than 2013-03-28 → start no earlier than 2013-03-25; resources Olga → Anton; baseline start none → 2013-03-25; baseline finish none → 2013-03-25 |
| 12 | VTD - Axle-box bearings temperature control |  |  |  |  | 20d → 23d |  | baseline start none → 2013-03-27; baseline finish none → 2013-03-27 |
| 13 | VTD - Bring Train into Service. Part 2 - Selection of active section (cab) | 2013-04-02 → 2013-03-26 (-7d) | 2013-04-03 → 2013-03-28 (-6d) | 2d → 3d |  | 15d → 21d |  | constraint start no earlier than 2013-04-02 → start no earlier than 2013-03-26; resources Anton → Andrei; baseline start none → 2013-03-26; baseline finish none → 2013-03-28 |
| 14 | VTD - Develop Driving Orders |  |  |  |  |  |  | baseline start none → 2013-03-13; baseline finish none → 2013-03-18 |
| 15 | VTD - Provision and Management of 110 V Supply | 2013-03-29 → 2013-03-30 (+1d) | 2013-03-30 → 2013-04-01 (+2d) |  |  | 16d → 18d |  | constraint start no earlier than 2013-03-29 → start no earlier than 2013-03-30; resources Andrei → Anton; baseline start none → 2013-03-30; baseline finish none → 2013-04-01 |
| 16 | VTD - Indicate Locomotive Presence (Acoustic Way) | 2013-03-25 → 2013-03-28 (+3d) | 2013-03-25 → 2013-03-28 (+3d) |  |  |  |  | constraint start no earlier than 2013-03-25 → start no earlier than 2013-03-28; baseline start none → 2013-03-28; baseline finish none → 2013-03-28 |
| 17 | VTD - Measure and Indicate the Train Speed |  |  |  |  |  |  | baseline start none → 2013-03-23; baseline finish none → 2013-03-23 |
| 18 | VTD - Parking brake control | 2013-03-27 → 2013-04-02 (+6d) | 2013-03-29 → 2013-04-04 (+6d) |  |  | 17d → 16d |  | constraint start no earlier than 2013-03-27 → start no earlier than 2013-04-02; resources Anton → Olga; baseline start none → 2013-04-02; baseline finish none → 2013-04-04 |
| 19 | VTD - Compressed Air Production | 2013-04-01 → 2013-03-30 (-2d) | 2013-04-02 → 2013-04-01 (-1d) |  |  | 15d → 18d |  | constraint start no earlier than 2013-04-01 → start no earlier than 2013-03-30; resources Andrei → Olga; baseline start none → 2013-03-30; baseline finish none → 2013-04-01 |
| 20 | VTD - Manage the high voltage configuration (Desk control) |  |  |  |  |  |  | baseline start none → 2013-03-19; baseline finish none → 2013-03-19 |
| 21 | VTD - Compressed Air Distribution | 2013-04-03 → 2013-03-30 (-4d) | 2013-04-04 → 2013-04-01 (-3d) |  |  | 13d → 18d |  | constraint start no earlier than 2013-04-03 → start no earlier than 2013-03-30; baseline start none → 2013-03-30; baseline finish none → 2013-04-01 |
| 22 | VTD - Control the circuit breaker (Desk control) | 2013-03-30 → 2013-03-26 (-4d) | 2013-03-30 → 2013-03-26 (-4d) |  |  | 17d → 24d |  | constraint start no earlier than 2013-03-30 → start no earlier than 2013-03-26; resources Olga → Anton; baseline start none → 2013-03-26; baseline finish none → 2013-03-26 |
| 23 | VTD - Manage the pantographs (Desk control) | 2013-04-01 → 2013-03-27 (-5d) | 2013-04-01 → 2013-03-27 (-5d) |  |  | 17d → 23d |  | constraint start no earlier than 2013-04-01 → start no earlier than 2013-03-27; resources Olga → Anton; baseline start none → 2013-03-27; baseline finish none → 2013-03-27 |
| 24 | VTD - Grounding of the locomotive | 2013-04-04 → 2013-03-29 (-6d) | 2013-04-04 → 2013-03-29 (-6d) |  |  | 14d → 21d |  | constraint start no earlier than 2013-04-04 → start no earlier than 2013-03-29; resources Anton → Andrei; baseline start none → 2013-03-29; baseline finish none → 2013-03-29 |
| 25 | VTD - Pneumatic brake control | 2013-03-30 → 2013-04-02 (+3d) | 2013-04-01 → 2013-04-03 (+2d) |  |  | 14d → 16d |  | constraint start no earlier than 2013-03-30 → start no earlier than 2013-04-02; baseline start none → 2013-04-02; baseline finish none → 2013-04-03 |
| 26 | VTD - Tape operating data |  |  |  |  |  |  | baseline start none → 2013-03-15; baseline finish none → 2013-03-15 |
| 27 | VTD - Broadcast the time | 2013-04-02 → 2013-03-29 (-4d) | 2013-04-02 → 2013-03-29 (-4d) |  |  | 16d → 21d |  | constraint start no earlier than 2013-04-02 → start no earlier than 2013-03-29; resources Olga → Anton; baseline start none → 2013-03-29; baseline finish none → 2013-03-29 |
| 28 | VTD - Generate Sounds | 2013-03-26 → 2013-03-28 (+2d) | 2013-03-26 → 2013-03-28 (+2d) |  |  | 21d → 22d |  | constraint start no earlier than 2013-03-26 → start no earlier than 2013-03-28; resources Anton → Olga; baseline start none → 2013-03-28; baseline finish none → 2013-03-28 |
| 29 | VTD - Administrate locomotive topology (HMI Part) |  |  |  |  |  |  | baseline start none → 2013-03-20; baseline finish none → 2013-03-20 |
| 30 | Test on Testbench |  |  |  |  |  |  | baseline start none → 2013-03-04; baseline finish none → 2013-03-04 |
| 31 | STR3 - RUN - Control and Monitor the Batteries Charge | 2013-04-09 → 2013-04-26 (+17d) | 2013-04-09 → 2013-04-26 (+17d) |  |  | 12d → 2d |  | constraint start no earlier than 2013-04-09 → start no earlier than 2013-04-26; baseline start none → 2013-04-26; baseline finish none → 2013-04-26 |
| 32 | STR3 - RUN - Control of microclimate system |  |  |  |  | 23.12d → 26.12d |  | baseline start none → 2013-03-25; baseline finish none → 2013-03-25 |
| 33 | STR3 - RUN - Parking mode in activate state | 2013-04-10 → 2013-03-28 (-13d) | 2013-04-11 → 2013-03-29 (-13d) |  |  |  |  | baseline start none → 2013-03-28; baseline finish none → 2013-03-29 |
| 34 | STR3 - RUN - Manage km-meter and operating times | 2013-03-28 → 2013-03-30 (+2d) | 2013-03-28 → 2013-03-30 (+2d) |  |  | 20d → 21d |  | constraint start no earlier than 2013-03-28 → start no earlier than 2013-03-30; baseline start none → 2013-03-30; baseline finish none → 2013-03-30 |
| 35 | STR3 - RUN - Machine Room Ventilation System |  |  |  |  | 22d → 25d |  | baseline start none → 2013-03-26; baseline finish none → 2013-03-26 |
| 36 | STR3 - RUN - Sanding System Management |  |  |  |  | 21d → 24d |  | baseline start none → 2013-03-27; baseline finish none → 2013-03-27 |
| 37 | STR3 - RUN - Antislide Protection System (WSP) | 2013-03-30 → 2013-04-01 (+2d) | 2013-03-30 → 2013-04-01 (+2d) |  |  | 18d → 21d |  | constraint start no earlier than 2013-03-30 → start no earlier than 2013-04-01; baseline start none → 2013-04-01; baseline finish none → 2013-04-01 |
| 38 | STR3 - RUN - Brake Substitution Control | 2013-04-01 → 2013-04-29 (+28d) | 2013-04-03 → 2013-04-30 (+27d) |  |  |  |  | baseline start none → 2013-04-29; baseline finish none → 2013-04-30 |
| 39 | STR3 - RUN - Management of auxiliary loads contactors | 2013-04-15 → 2013-04-05 (-10d) | 2013-04-16 → 2013-04-08 (-8d) |  |  |  |  | baseline start none → 2013-04-05; baseline finish none → 2013-04-08 |
| 40 | STR3 - RUN - Detect and report a fire and fire extinction | 2013-03-29 → 2013-04-02 (+4d) | 2013-03-29 → 2013-04-02 (+4d) |  |  | 19d → 20d |  | constraint start no earlier than 2013-03-29 → start no earlier than 2013-04-02; baseline start none → 2013-04-02; baseline finish none → 2013-04-02 |
| 41 | STR3 - RUN - Axle-box bearings temperature control | 2013-04-08 → 2013-04-09 (+1d) | 2013-04-08 → 2013-04-09 (+1d) |  |  | 13d → 15d |  | constraint start no earlier than 2013-04-08 → start no earlier than 2013-04-09; baseline start none → 2013-04-09; baseline finish none → 2013-04-09 |
| 42 | STR3 - RUN - Bring Train into Service. Part 2 - Selection of active section (cab) | 2013-04-05 → 2013-04-03 (-2d) | 2013-04-05 → 2013-04-04 (-1d) | 1d → 2d |  | 14d → 18d |  | constraint start no earlier than 2013-04-05 → start no earlier than 2013-04-03; baseline start none → 2013-04-03; baseline finish none → 2013-04-04 |
| 43 | STR2 - RUN - Develop Driving Orders | 2013-04-15 → 2013-03-30 (-16d) | 2013-04-17 → 2013-04-02 (-15d) |  |  | 6d → 19d | 14, 60 → 14, 59 | constraint start no earlier than 2013-04-15 → start no earlier than 2013-03-30; baseline start none → 2013-03-30; baseline finish none → 2013-04-02 |
| 44 | STR2 - RUN - Provision and Management of 110 V Supply |  |  |  |  | 3d → 6d |  | baseline start none → 2013-04-19; baseline finish none → 2013-04-22 |
| 45 | STR2 - RUN - Indicate Locomotive Presence (Acoustic Way) |  |  |  |  | 2d → 5d |  | baseline start none → 2013-04-23; baseline finish none → 2013-04-23 |
| 46 | STR2 - RUN - Measure and Indicate the Train Speed | 2013-04-04 → 2013-04-08 (+4d) | 2013-04-04 → 2013-04-08 (+4d) |  |  | 15d → 16d |  | constraint start no earlier than 2013-04-04 → start no earlier than 2013-04-08; baseline start none → 2013-04-08; baseline finish none → 2013-04-08 |
| 47 | STR2 - RUN - Parking brake control |  |  |  |  | 0d → 3d |  | baseline start none → 2013-04-24; baseline finish none → 2013-04-25 |
| 48 | STR2 - RUN - Compressed Air Production |  |  |  |  | 5d → 8d |  | baseline start none → 2013-04-17; baseline finish none → 2013-04-18 |
| 49 | STR2 - RUN - Manage the high voltage configuration (Desk control) |  |  |  |  | 2d → 5d |  | baseline start none → 2013-04-23; baseline finish none → 2013-04-23 |
| 50 | STR2 - RUN - Compressed Air Distribution |  |  |  |  | 3d → 6d |  | baseline start none → 2013-04-19; baseline finish none → 2013-04-22 |
| 51 | STR2 - RUN - Control the circuit breaker (Desk control) |  |  |  |  | 1d → 4d |  | baseline start none → 2013-04-24; baseline finish none → 2013-04-24 |
| 52 | STR2 - RUN - Manage the pantographs (Desk control) |  |  |  |  | 0d → 3d |  | baseline start none → 2013-04-25; baseline finish none → 2013-04-25 |
| 53 | STR2 - RUN - Grounding of the locomotive | 2013-04-12 → 2013-04-16 (+4d) | 2013-04-12 → 2013-04-16 (+4d) |  |  | 9d → 10d |  | constraint start no earlier than 2013-04-12 → start no earlier than 2013-04-16; baseline start none → 2013-04-16; baseline finish none → 2013-04-16 |
| 54 | STR2 - RUN - Pneumatic brake control | 2013-04-08 → 2013-04-10 (+2d) | 2013-04-10 → 2013-04-12 (+2d) |  |  | 11d → 12d |  | constraint start no earlier than 2013-04-08 → start no earlier than 2013-04-10; baseline start none → 2013-04-10; baseline finish none → 2013-04-12 |
| 55 | STR2 - RUN - Tape operating data |  |  |  |  | 14d → 17d |  | baseline start none → 2013-04-05; baseline finish none → 2013-04-05 |
| 56 | STR2 - RUN - Broadcast the time | 2013-04-04 → 2013-04-09 (+5d) | 2013-04-04 → 2013-04-09 (+5d) |  |  |  |  | constraint start no earlier than 2013-04-04 → start no earlier than 2013-04-09; baseline start none → 2013-04-09; baseline finish none → 2013-04-09 |
| 57 | STR2 - RUN - Generate Sounds | 2013-04-12 → 2013-04-04 (-8d) | 2013-04-12 → 2013-04-04 (-8d) |  |  | 9d → 18d |  | constraint start no earlier than 2013-04-12 → start no earlier than 2013-04-04; baseline start none → 2013-04-04; baseline finish none → 2013-04-04 |
| 58 | STR2 - RUN - Administrate locomotive topology (HMI Part) | 2013-04-11 → 2013-04-15 (+4d) | 2013-04-11 → 2013-04-15 (+4d) |  |  | 10d → 11d |  | constraint start no earlier than 2013-04-11 → start no earlier than 2013-04-15; baseline start none → 2013-04-15; baseline finish none → 2013-04-15 |
| 59 | 0.1.1 |  |  |  |  |  |  | baseline start none → 2013-03-25; baseline finish none → 2013-03-25 |
| 60 | 3.0.0 |  |  |  |  |  |  | baseline start none → 2013-04-01; baseline finish none → 2013-04-01 |

## Version 6 (saved 2013-03-27)

Note of the change: Update of planning.

Last finish stays 2013-04-30. Complete tasks 10 → 11.

Removed: 30 Test on Testbench

Changed:

| ID | Task | Start | Finish | Duration | Complete | Total float | Other |
| --- | --- | --- | --- | --- | --- | --- | --- |
| 1 | **STR3** |  | 2013-04-04 → 2013-04-12 (+8d) | 19d → 24.29d | 42% → 43% | 17d → 11.71d |  |
| 2 | VTD - Control and Monitor the Batteries Charge | 2013-03-29 → 2013-03-28 (-1d) | 2013-03-29 → 2013-03-28 (-1d) |  |  | 21d → 22d | constraint start no earlier than 2013-03-29 → start no earlier than 2013-03-28; resources Olga → Anton |
| 5 | VTD - Manage km-meter and operating times | 2013-03-19 A → 2013-04-05 (+17d) | 2013-03-19 A → 2013-04-05 (+17d) |  | 100% → 0% | none → 16d | constraint none → start no earlier than 2013-04-05 |
| 8 | VTD - Antislide Protection System (WSP) |  | 2013-03-26 → 2013-03-28 (+2d) | 3d → 4.5d | 33% → 50% | 24d → 22.5d | resources Olga → Olga [50%] |
| 11 | VTD - Detect and report a fire and fire extinction | 2013-03-25 A | 2013-03-25 A |  | 0% → 100% | 25d → none |  |
| 12 | VTD - Axle-box bearings temperature control | 2013-03-27 → 2013-03-29 (+2d) | 2013-03-27 → 2013-03-30 (+3d) | 1d → 2d |  | 23d → 20d | constraint start no earlier than 2013-03-27 → start no earlier than 2013-03-29; resources Olga → Olga [50%] |
| 16 | VTD - Indicate Locomotive Presence (Acoustic Way) | 2013-03-28 → 2013-03-26 A (-2d) | 2013-03-28 → 2013-03-26 A (-2d) |  | 0% → 100% | 22d → none | constraint start no earlier than 2013-03-28 → start no earlier than 2013-03-26 |
| 18 | VTD - Parking brake control | 2013-04-02 → 2013-04-08 (+6d) | 2013-04-04 → 2013-04-12 (+8d) | 3d → 4.29d |  | 16d → 10.71d | constraint start no earlier than 2013-04-02 → start no earlier than 2013-04-08; resources Olga → Olga [70%] |
| 19 | VTD - Compressed Air Production | 2013-03-30 → 2013-04-04 (+5d) | 2013-04-01 → 2013-04-05 (+4d) |  |  | 18d → 15d | constraint start no earlier than 2013-03-30 → start no earlier than 2013-04-04; resources Olga → Anton |
| 22 | VTD - Control the circuit breaker (Desk control) | 2013-03-26 → 2013-04-08 (+13d) | 2013-03-26 → 2013-04-08 (+13d) |  |  | 24d → 15d | constraint start no earlier than 2013-03-26 → start no earlier than 2013-04-08 |
| 28 | VTD - Generate Sounds | 2013-03-28 → 2013-04-08 (+11d) | 2013-03-28 → 2013-04-08 (+11d) |  |  | 22d → 15d | constraint start no earlier than 2013-03-28 → start no earlier than 2013-04-08; resources Olga → Andrei |
| 31 | STR3 - RUN - Control of microclimate system | 2013-03-25 → 2013-03-26 (+1d) | 2013-03-25 → 2013-03-26 (+1d) |  |  | 26.12d → 25.5d | constraint start no earlier than 2013-03-25 → start no earlier than 2013-03-26 |
| 33 | STR3 - RUN - Manage km-meter and operating times | 2013-03-30 → 2013-04-08 (+9d) | 2013-03-30 → 2013-04-08 (+9d) |  |  | 21d → 16d |  |
| 34 | STR3 - RUN - Machine Room Ventilation System | 2013-03-26 → 2013-03-27 (+1d) | 2013-03-26 → 2013-03-27 (+1d) |  |  | 25d → 24d | constraint start no earlier than 2013-03-26 → start no earlier than 2013-03-27 |
| 56 | STR2 - RUN - Generate Sounds | 2013-04-04 → 2013-04-09 (+5d) | 2013-04-04 → 2013-04-09 (+5d) |  |  | 18d → 15d |  |

## Version 7 (saved 2013-03-28)

Note of the change: Update of planning.

Last finish 2013-04-30 → 2013-06-30 (+61d).

Added:

| ID | Task | Duration | Start | Finish |
| --- | --- | --- | --- | --- |
| 30 | **STR3 Validation** | 40d | 2013-03-26 | 2013-05-20 |
| 61 | 3.1.0 | 0d | 2013-04-20 | 2013-04-20 |
| 62 | STR 4 deadline | 0d | 2013-06-30 | 2013-06-30 |
| 63 | STR 4 VTD writing / update | 1d? | 2013-03-04 | 2013-03-04 |
| 64 | STR 4 RUN tests | 1d? | 2013-03-04 | 2013-03-04 |

Changed:

| ID | Task | Start | Finish | Duration | Complete | Total float | Predecessors | Other |
| --- | --- | --- | --- | --- | --- | --- | --- | --- |
| 1 | **STR3** |  |  | 24.29d → 25d |  | 11.71d → 54d |  |  |
| 4 | VTD - Parking mode in activate state |  | 2013-03-25 → 2013-03-27 (+2d) | 3d → 5d | 50% → 30% | 24d → 65d |  |  |
| 5 | VTD - Manage km-meter and operating times | 2013-04-05 → 2013-04-04 (-1d) | 2013-04-05 → 2013-04-04 (-1d) |  |  | 16d → 60d |  | constraint start no earlier than 2013-04-05 → start no earlier than 2013-04-04 |
| 9 | VTD - Brake Substitution Control | 2013-04-02 → 2013-04-08 (+6d) | 2013-04-04 → 2013-04-10 (+6d) |  |  | 16d → 55d |  | constraint start no earlier than 2013-04-02 → start no earlier than 2013-04-08 |
| 13 | VTD - Bring Train into Service. Part 2 - Selection of active section (cab) | 2013-03-26 → 2013-03-28 (+2d) | 2013-03-28 → 2013-03-30 (+2d) |  |  | 21d → 62d |  | constraint start no earlier than 2013-03-26 → start no earlier than 2013-03-28 |
| 18 | VTD - Parking brake control | 2013-04-08 → 2013-04-04 (-4d) | 2013-04-12 → 2013-04-10 (-2d) |  |  | 10.71d → 55.71d |  | constraint start no earlier than 2013-04-08 → start no earlier than 2013-04-04; resources Olga [70%] → Anton [70%] |
| 19 | VTD - Compressed Air Production | 2013-04-04 → 2013-04-02 (-2d) | 2013-04-05 → 2013-04-03 (-2d) |  |  | 15d → 60d |  | constraint start no earlier than 2013-04-04 → start no earlier than 2013-04-02 |
| 21 | VTD - Compressed Air Distribution | 2013-03-30 → 2013-04-02 (+3d) | 2013-04-01 → 2013-04-03 (+2d) |  |  | 18d → 60d |  | constraint start no earlier than 2013-03-30 → start no earlier than 2013-04-02 |
| 22 | VTD - Control the circuit breaker (Desk control) | 2013-04-08 → 2013-03-27 A (-12d) | 2013-04-08 → 2013-03-27 (-12d) |  | 0% → 75% | 15d → 66d |  | constraint start no earlier than 2013-04-08 → start no earlier than 2013-03-27 |
| 23 | VTD - Manage the pantographs (Desk control) | 2013-03-27 → 2013-04-08 (+12d) | 2013-03-27 → 2013-04-09 (+13d) | 1d → 1.43d |  | 23d → 57.57d |  | constraint start no earlier than 2013-03-27 → start no earlier than 2013-04-08; resources Anton → Olga [70%] |
| 24 | VTD - Grounding of the locomotive | 2013-03-29 → 2013-04-01 (+3d) | 2013-03-29 → 2013-04-01 (+3d) |  |  | 21d → 63d |  | constraint start no earlier than 2013-03-29 → start no earlier than 2013-04-01 |
| 25 | VTD - Pneumatic brake control | 2013-04-02 → 2013-04-11 (+9d) | 2013-04-03 → 2013-04-12 (+9d) |  |  | 16d → 52d |  | constraint start no earlier than 2013-04-02 → start no earlier than 2013-04-11; resources Anton → Andrei |
| 28 | VTD - Generate Sounds | 2013-04-08 → 2013-04-05 (-3d) | 2013-04-08 → 2013-04-05 (-3d) |  |  | 15d → 59d |  | constraint start no earlier than 2013-04-08 → start no earlier than 2013-04-05 |
| 31 | STR3 - RUN - Control and Monitor the Batteries Charge | 2013-04-26 → 2013-04-16 (-10d) | 2013-04-26 → 2013-04-16 (-10d) |  |  | 2d → 53d |  | constraint start no earlier than 2013-04-26 → start no earlier than 2013-04-16 |
| 34 | STR3 - RUN - Manage km-meter and operating times | 2013-04-08 → 2013-04-17 (+9d) | 2013-04-08 → 2013-04-17 (+9d) |  |  | 16d → 52d |  | constraint start no earlier than 2013-03-30 → start no earlier than 2013-04-17 |
| 36 | STR3 - RUN - Sanding System Management | 2013-03-27 → 2013-04-15 (+19d) | 2013-03-27 → 2013-04-15 (+19d) |  |  | 24d → 54d |  | constraint start no earlier than 2013-03-27 → start no earlier than 2013-04-15 |
| 37 | STR3 - RUN - Antislide Protection System (WSP) | 2013-04-01 → 2013-04-09 (+8d) | 2013-04-01 → 2013-04-09 (+8d) |  |  | 21d → 58d |  | constraint start no earlier than 2013-04-01 → start no earlier than 2013-04-09 |
| 38 | STR3 - RUN - Brake Substitution Control |  |  |  |  |  | 60, 9 → 9, 61 |  |
| 39 | STR3 - RUN - Management of auxiliary loads contactors | 2013-04-05 → 2013-04-01 (-4d) | 2013-04-08 → 2013-04-02 (-6d) |  |  |  |  |  |
| 40 | STR3 - RUN - Detect and report a fire and fire extinction | 2013-04-02 → 2013-04-05 (+3d) | 2013-04-02 → 2013-04-05 (+3d) |  |  | 20d → 60d |  | constraint start no earlier than 2013-04-02 → start no earlier than 2013-04-05 |
| 41 | STR3 - RUN - Axle-box bearings temperature control | 2013-04-09 → 2013-04-08 (-1d) | 2013-04-09 → 2013-04-08 (-1d) |  |  | 15d → 59d |  | constraint start no earlier than 2013-04-09 → start no earlier than 2013-04-08 |
| 43 | STR3 - RUN - Pneumatic brake control | 2013-04-10 → 2013-04-24 (+14d) | 2013-04-12 → 2013-04-26 (+14d) |  |  | 12d → 45d | 25, 60 → 25, 61 | was named STR2 - RUN - Pneumatic brake control; constraint start no earlier than 2013-04-10 → start no earlier than 2013-04-24 |
| 44 | STR2 - RUN - Develop Driving Orders | 2013-03-30 → 2013-04-10 (+11d) | 2013-04-02 → 2013-04-12 (+10d) |  |  | 19d → 55d |  | constraint start no earlier than 2013-03-30 → start no earlier than 2013-04-10 |
| 45 | STR2 - RUN - Provision and Management of 110 V Supply | 2013-04-19 → 2013-05-01 (+12d) | 2013-04-22 → 2013-05-02 (+10d) |  |  | 6d → 41d |  | constraint start no earlier than 2013-04-19 → start no earlier than 2013-05-01 |
| 46 | STR2 - RUN - Indicate Locomotive Presence (Acoustic Way) | 2013-04-23 → 2013-05-13 (+20d) | 2013-04-23 → 2013-05-13 (+20d) |  |  | 5d → 34d |  | constraint start no earlier than 2013-04-23 → start no earlier than 2013-05-13 |
| 47 | STR2 - RUN - Measure and Indicate the Train Speed | 2013-04-08 → 2013-05-16 (+38d) | 2013-04-08 → 2013-05-16 (+38d) |  |  | 16d → 31d |  | constraint start no earlier than 2013-04-08 → start no earlier than 2013-05-16 |
| 48 | STR2 - RUN - Parking brake control | 2013-04-24 → 2013-04-18 (-6d) | 2013-04-25 → 2013-04-19 (-6d) |  |  | 3d → 50d |  | constraint start no earlier than 2013-04-24 → start no earlier than 2013-04-18 |
| 49 | STR2 - RUN - Compressed Air Production | 2013-04-17 → 2013-05-03 (+16d) | 2013-04-18 → 2013-05-06 (+18d) |  |  | 8d → 39d |  | constraint start no earlier than 2013-04-17 → start no earlier than 2013-05-03 |
| 50 | STR2 - RUN - Manage the high voltage configuration (Desk control) | 2013-04-23 → 2013-05-08 (+15d) | 2013-04-23 → 2013-05-08 (+15d) |  |  | 5d → 37d |  | constraint start no earlier than 2013-04-23 → start no earlier than 2013-05-08 |
| 51 | STR2 - RUN - Compressed Air Distribution | 2013-04-19 → 2013-04-22 (+3d) | 2013-04-22 → 2013-04-23 (+1d) |  |  | 6d → 48d |  | constraint start no earlier than 2013-04-19 → start no earlier than 2013-04-22 |
| 52 | STR2 - RUN - Control the circuit breaker (Desk control) | 2013-04-24 → 2013-05-14 (+20d) | 2013-04-24 → 2013-05-14 (+20d) |  |  | 4d → 33d |  | constraint start no earlier than 2013-04-24 → start no earlier than 2013-05-14 |
| 53 | STR2 - RUN - Manage the pantographs (Desk control) | 2013-04-25 → 2013-05-15 (+20d) | 2013-04-25 → 2013-05-15 (+20d) |  |  | 3d → 32d |  | constraint start no earlier than 2013-04-25 → start no earlier than 2013-05-15 |
| 54 | STR2 - RUN - Grounding of the locomotive | 2013-04-16 → 2013-05-09 (+23d) | 2013-04-16 → 2013-05-09 (+23d) |  |  | 10d → 36d |  | constraint start no earlier than 2013-04-16 → start no earlier than 2013-05-09 |
| 55 | STR2 - RUN - Tape operating data | 2013-04-05 → 2013-05-20 (+45d) | 2013-04-05 → 2013-05-20 (+45d) |  |  | 17d → 29d |  | constraint start no earlier than 2013-04-05 → start no earlier than 2013-05-20 |
| 56 | STR2 - RUN - Broadcast the time | 2013-04-09 → 2013-05-07 (+28d) | 2013-04-09 → 2013-05-07 (+28d) |  |  | 15d → 38d |  | constraint start no earlier than 2013-04-09 → start no earlier than 2013-05-07 |
| 57 | STR2 - RUN - Generate Sounds | 2013-04-09 → 2013-05-10 (+31d) | 2013-04-09 → 2013-05-10 (+31d) |  |  | 15d → 35d |  | constraint start no earlier than 2013-04-04 → start no earlier than 2013-05-10 |
| 58 | STR2 - RUN - Administrate locomotive topology (HMI Part) | 2013-04-15 → 2013-05-17 (+32d) | 2013-04-15 → 2013-05-17 (+32d) |  |  | 11d → 30d |  | constraint start no earlier than 2013-04-15 → start no earlier than 2013-05-17 |

## Version 8 (saved 2013-03-28)

Note of the change: Update of planning.

Last finish stays 2013-06-30.

Changed:

| ID | Task | Start | Finish |
| --- | --- | --- | --- |
| 60 | 3.0.0 | 2013-04-01 → 2013-03-31 (-1d) | 2013-04-01 → 2013-03-31 (-1d) |

## Version 9 (saved 2013-03-29)

Note of the change: Merge branch 'master' of https://github.com/gmanciet/Validation

Last finish stays 2013-06-30. Complete tasks 11 → 6.

Changed:

| ID | Task | Start | Finish | Duration | Complete | Total float | Predecessors | Other |
| --- | --- | --- | --- | --- | --- | --- | --- | --- |
| 1 | **STR3** |  |  |  | 43% → 42% |  |  |  |
| 4 | VTD - Parking mode in activate state |  |  |  | 30% → 50% |  |  |  |
| 7 | VTD - Sanding System Management |  | 2013-03-18 A → 2013-03-18 |  | 100% → 50% | none → 73d |  |  |
| 8 | VTD - Antislide Protection System (WSP) |  |  |  | 50% → 75% |  |  |  |
| 10 | VTD - Management of auxiliary loads contactors |  | 2013-03-20 A → 2013-03-20 |  | 100% → 75% | none → 70d |  |  |
| 12 | VTD - Axle-box bearings temperature control | 2013-03-29 A |  |  | 0% → 50% | 63d → 64d |  |  |
| 13 | VTD - Bring Train into Service. Part 2 - Selection of active section (cab) | 2013-03-28 A |  |  | 0% → 50% | 62d → 63d |  |  |
| 14 | VTD - Develop Driving Orders |  | 2013-03-18 A → 2013-03-18 |  | 100% → 50% |  |  |  |
| 15 | VTD - Provision and Management of 110 V Supply | 2013-03-30 → 2013-04-08 (+9d) | 2013-04-01 → 2013-04-10 (+9d) | 2d → 2.86d |  | 61d → 55.14d |  | constraint start no earlier than 2013-03-30 → start no earlier than 2013-04-08; resources Anton → Olga [70%] |
| 17 | VTD - Measure and Indicate the Train Speed |  | 2013-03-23 A → 2013-03-23 |  | 100% → 75% | none → 69d |  |  |
| 20 | VTD - Manage the high voltage configuration (Desk control) |  | 2013-03-19 A → 2013-03-19 |  | 100% → 75% | none → 72d |  |  |
| 23 | VTD - Manage the pantographs (Desk control) | 2013-04-08 → 2013-03-29 (-10d) | 2013-04-09 → 2013-03-30 (-10d) |  |  | 57.57d → 63.57d |  | constraint start no earlier than 2013-04-08 → start no earlier than 2013-03-29; resources Olga [70%] → Anton [70%] |
| 27 | VTD - Broadcast the time | 2013-03-29 → 2013-04-01 (+3d) | 2013-03-29 → 2013-04-01 (+3d) |  |  | 64d → 63d |  | constraint start no earlier than 2013-03-29 → start no earlier than 2013-04-01 |
| 31 | STR3 - RUN - Control and Monitor the Batteries Charge | 2013-04-16 → 2013-04-02 (-14d) | 2013-04-16 → 2013-04-02 (-14d) |  |  | 53d → 63d |  | constraint start no earlier than 2013-04-16 → start no earlier than 2013-04-02 |
| 36 | STR3 - RUN - Sanding System Management | 2013-04-15 → 2013-04-01 (-14d) | 2013-04-15 → 2013-04-01 (-14d) |  |  | 54d → 64d |  | constraint start no earlier than 2013-04-15 → start no earlier than 2013-04-01 |
| 39 | STR3 - RUN - Management of auxiliary loads contactors | 2013-04-01 → 2013-04-22 (+21d) | 2013-04-02 → 2013-04-23 (+21d) |  |  | 63d → 48d | 60, 10 → 10, 61 |  |
| 45 | STR2 - RUN - Provision and Management of 110 V Supply | 2013-05-01 → 2013-04-18 (-13d) | 2013-05-02 → 2013-04-19 (-13d) |  |  | 41d → 50d |  | constraint start no earlier than 2013-05-01 → start no earlier than 2013-04-18 |
| 48 | STR2 - RUN - Parking brake control | 2013-04-18 → 2013-04-15 (-3d) | 2013-04-19 → 2013-04-16 (-3d) |  |  | 50d → 53d |  | constraint start no earlier than 2013-04-18 → start no earlier than 2013-04-15 |
| 51 | STR2 - RUN - Compressed Air Distribution | 2013-04-22 → 2013-05-01 (+9d) | 2013-04-23 → 2013-05-02 (+9d) |  |  | 48d → 41d |  | constraint start no earlier than 2013-04-22 → start no earlier than 2013-05-01 |

## Version 10 (saved 2013-04-01)

Note of the change: Modification of planning

Last finish stays 2013-06-30.

Added:

| ID | Task | Duration | Start | Finish |
| --- | --- | --- | --- | --- |
| 63 | **STR4 - VTD writing** | 4d | 2013-03-04 | 2013-03-07 |
| 66 | STR4 - VTD - Remote Control the Locomotives | 1d | 2013-03-04 | 2013-03-04 |
| 67 | STR4 - VTD - Safety BLOCK | 1d | 2013-03-04 | 2013-03-04 |
| 68 | STR4 - VTD - Tests Before Departure | 4d | 2013-03-04 | 2013-03-07 |
| 69 | STR4 - VTD - Couple, Uncouple | 2d | 2013-03-04 | 2013-03-05 |
| 70 | STR4 - VTD - Video surveillance system | 1d | 2013-03-04 | 2013-03-04 |
| 71 | STR4 - VTD - Braking of a long train | 3d | 2013-03-04 | 2013-03-06 |
| 72 | STR4 - VTD - Ensure Auto driving Function | 2d | 2013-03-04 | 2013-03-05 |
| 73 | STR4 - VTD - Administrate Ethernet communication | 1d | 2013-03-04 | 2013-03-04 |
| 74 | STR4 - VTD - Bring Train into Service. Part 1 - Depot supply. | 2d | 2013-03-04 | 2013-03-05 |
| 75 | STR4 - VTD - Manage Train Pre-Heating | 1d | 2013-03-04 | 2013-03-04 |
| 76 | STR4 - VTD - Cruise Control (Speed regulation) | 3d | 2013-03-04 | 2013-03-06 |
| 77 | STR3NR - VTD - Control and Monitor the Batteries Charge | 0.5d | 2013-03-04 | 2013-03-04 |
| 78 | STR3NR - VTD - Control of microclimate system | 0.5d | 2013-03-04 | 2013-03-04 |
| 79 | STR3NR - VTD - Parking mode in activate state | 0.5d | 2013-03-04 | 2013-03-04 |
| 80 | STR3NR - VTD - Manage km-meter and operating times | 0.5d | 2013-03-04 | 2013-03-04 |
| 81 | STR3NR - VTD - Machine Room Ventilation System | 0.5d | 2013-03-04 | 2013-03-04 |
| 82 | STR3NR - VTD - Sanding System Management | 0.5d | 2013-03-04 | 2013-03-04 |
| 83 | STR3NR - VTD - Antislide Protection System (WSP) | 0.5d | 2013-03-04 | 2013-03-04 |
| 84 | STR3NR - VTD - Brake Substitution Control | 2d | 2013-03-04 | 2013-03-05 |
| 85 | STR3NR - VTD - Management of auxiliary loads contactors | 2d | 2013-03-04 | 2013-03-05 |
| 86 | STR3NR - VTD - Detect and report a fire and fire extinction | 0.5d | 2013-03-04 | 2013-03-04 |
| 87 | STR3NR - VTD - Axle-box bearings temperature control | 0.5d | 2013-03-04 | 2013-03-04 |
| 88 | STR3NR - VTD - Bring Train into Service. Part 2 - Selection of active section (cab) | 2d | 2013-03-04 | 2013-03-05 |
| 89 | STR3NR - VTD - Pneumatic brake control | 1d | 2013-03-04 | 2013-03-04 |
| 90 | STR3NR - VTD - Develop Driving Orders | 2d | 2013-03-04 | 2013-03-05 |
| 91 | STR3NR - VTD - Provision and Management of 110 V Supply | 0.5d | 2013-03-04 | 2013-03-04 |
| 92 | STR3NR - VTD - Indicate Locomotive Presence (Acoustic Way) | 0.5d | 2013-03-04 | 2013-03-04 |
| 93 | STR3NR - VTD - Measure and Indicate the Train Speed | 0.5d | 2013-03-04 | 2013-03-04 |
| 94 | STR3NR - VTD - Parking brake control | 2d | 2013-03-04 | 2013-03-05 |
| 95 | STR3NR - VTD - Compressed Air Production | 1d | 2013-03-04 | 2013-03-04 |
| 96 | STR3NR - VTD - Manage the high voltage configuration (Desk control) | 0.5d | 2013-03-04 | 2013-03-04 |
| 97 | STR3NR - VTD - Compressed Air Distribution | 1d | 2013-03-04 | 2013-03-04 |
| 98 | STR3NR - VTD - Control the circuit breaker (Desk control) | 0.5d | 2013-03-04 | 2013-03-04 |
| 99 | STR3NR - VTD - Manage the pantographs (Desk control) | 0.5d | 2013-03-04 | 2013-03-04 |
| 100 | STR3NR - VTD - Grounding of the locomotive | 0.5d | 2013-03-04 | 2013-03-04 |
| 101 | STR3NR - VTD - Tape operating data | 0.5d | 2013-03-04 | 2013-03-04 |
| 102 | STR3NR - VTD - Broadcast the time | 0.5d | 2013-03-04 | 2013-03-04 |
| 103 | STR3NR - VTD - Generate Sounds | 0.5d | 2013-03-04 | 2013-03-04 |
| 104 | STR3NR - VTD - Administrate locomotive topology (HMI Part) | 0.5d | 2013-03-04 | 2013-03-04 |
| 105 | **STR4 - Testbench Run** | 3d | 2013-03-04 | 2013-03-06 |
| 106 | STR4 - RUN -Ensure Flange Lubricating | 1d | 2013-03-04 | 2013-03-04 |
| 107 | STR4 - RUN -Locomotive Radio Communication System | 1d | 2013-03-04 | 2013-03-04 |
| 108 | STR4 - RUN -Remote Control the Locomotives | 1d | 2013-03-04 | 2013-03-04 |
| 109 | STR4 - RUN -Safety BLOCK | 1d | 2013-03-04 | 2013-03-04 |
| 110 | STR4 - RUN -Tests Before Departure | 3d | 2013-03-04 | 2013-03-06 |
| 111 | STR4 - RUN -Couple, Uncouple | 2d | 2013-03-04 | 2013-03-05 |
| 112 | STR4 - RUN -Video surveillance system | 1d | 2013-03-04 | 2013-03-04 |
| 113 | STR4 - RUN -Braking of a long train | 2d | 2013-03-04 | 2013-03-05 |
| 114 | STR4 - RUN -Ensure Auto driving Function | 2d | 2013-03-04 | 2013-03-05 |
| 115 | STR4 - RUN -Administrate Ethernet communication | 1d | 2013-03-04 | 2013-03-04 |
| 116 | STR4 - RUN -Bring Train into Service. Part 1 - Depot supply. | 3d | 2013-03-04 | 2013-03-06 |
| 117 | STR4 - RUN -Manage Train Pre-Heating | 1d | 2013-03-04 | 2013-03-04 |
| 118 | STR4 - RUN -Cruise Control (Speed regulation) | 3d | 2013-03-04 | 2013-03-06 |
| 119 | STR3NR - RUN -Control and Monitor the Batteries Charge | 0.5d | 2013-03-04 | 2013-03-04 |
| 120 | STR3NR - RUN -Control of microclimate system | 0.5d | 2013-03-04 | 2013-03-04 |
| 121 | STR3NR - RUN -Parking mode in activate state | 1.5d | 2013-03-04 | 2013-03-05 |
| 122 | STR3NR - RUN -Manage km-meter and operating times | 0.5d | 2013-03-04 | 2013-03-04 |
| 123 | STR3NR - RUN -Machine Room Ventilation System | 1d | 2013-03-04 | 2013-03-04 |
| 124 | STR3NR - RUN -Sanding System Management | 0.5d | 2013-03-04 | 2013-03-04 |
| 125 | STR3NR - RUN -Antislide Protection System (WSP) | 0.5d | 2013-03-04 | 2013-03-04 |
| 126 | STR3NR - RUN -Brake Substitution Control | 2d | 2013-03-04 | 2013-03-05 |
| 127 | STR3NR - RUN -Management of auxiliary loads contactors | 2d | 2013-03-04 | 2013-03-05 |
| 128 | STR3NR - RUN -Detect and report a fire and fire extinction | 1d | 2013-03-04 | 2013-03-04 |
| 129 | STR3NR - RUN -Axle-box bearings temperature control | 1d | 2013-03-04 | 2013-03-04 |
| 130 | STR3NR - RUN -Bring Train into Service. Part 2 - Selection of active section (cab) | 2d | 2013-03-04 | 2013-03-05 |
| 131 | STR3NR - RUN -Pneumatic brake control | 2d | 2013-03-04 | 2013-03-05 |
| 132 | STR3NR - RUN -Develop Driving Orders | 2d | 2013-03-04 | 2013-03-05 |
| 133 | STR3NR - RUN -Provision and Management of 110 V Supply | 0.5d | 2013-03-04 | 2013-03-04 |
| 134 | STR3NR - RUN -Indicate Locomotive Presence (Acoustic Way) | 0.5d | 2013-03-04 | 2013-03-04 |
| 135 | STR3NR - RUN -Measure and Indicate the Train Speed | 0.5d | 2013-03-04 | 2013-03-04 |
| 136 | STR3NR - RUN -Parking brake control | 1.5d | 2013-03-04 | 2013-03-05 |
| 137 | STR3NR - RUN -Compressed Air Production | 1d | 2013-03-04 | 2013-03-04 |
| 138 | STR3NR - RUN -Manage the high voltage configuration (Desk control) | 0.5d | 2013-03-04 | 2013-03-04 |
| 139 | STR3NR - RUN -Compressed Air Distribution | 1.5d | 2013-03-04 | 2013-03-05 |
| 140 | STR3NR - RUN -Control the circuit breaker (Desk control) | 0.5d | 2013-03-04 | 2013-03-04 |
| 141 | STR3NR - RUN -Manage the pantographs (Desk control) | 0.5d | 2013-03-04 | 2013-03-04 |
| 142 | STR3NR - RUN -Grounding of the locomotive | 0.5d | 2013-03-04 | 2013-03-04 |
| 143 | STR3NR - RUN -Tape operating data | 0.5d | 2013-03-04 | 2013-03-04 |
| 144 | STR3NR - RUN -Broadcast the time | 0.5d | 2013-03-04 | 2013-03-04 |
| 145 | STR3NR - RUN -Generate Sounds | 0.5d | 2013-03-04 | 2013-03-04 |
| 146 | STR3NR - RUN -Administrate locomotive topology (HMI Part) | 0.5d | 2013-03-04 | 2013-03-04 |

Changed:

| ID | Task | Finish | Duration | Complete | Other |
| --- | --- | --- | --- | --- | --- |
| 1 | **STR3** |  |  | 42% → 43% |  |
| 13 | VTD - Bring Train into Service. Part 2 - Selection of active section (cab) |  |  | 50% → 75% |  |
| 64 | STR4 - VTD - Ensure Flange Lubricating | 2013-03-04 → 2013-03-05 (+1d) | 1d? → 2d |  | was named STR 4 VTD writing / update |
| 65 | STR4 - VTD - Locomotive Radio Communication System |  | 1d? → 1d |  | was named STR 4 RUN tests |

## Version 11 (saved 2013-04-03)

Note of the change: Update of planning.

Last finish stays 2013-06-30.

Added:

| ID | Task | Duration | Start | Finish |
| --- | --- | --- | --- | --- |
| 62 | 3.2.0 | 0d | 2013-04-26 | 2013-04-26 |

Changed:

| ID | Task | Start | Finish | Complete | Total float | Predecessors | Other |
| --- | --- | --- | --- | --- | --- | --- | --- |
| 1 | **STR3** |  |  | 43% → 56% |  |  |  |
| 4 | VTD - Parking mode in activate state |  |  | 50% → 75% |  |  |  |
| 7 | VTD - Sanding System Management |  |  | 50% → 75% |  |  |  |
| 14 | VTD - Develop Driving Orders |  |  | 50% → 75% |  |  |  |
| 19 | VTD - Compressed Air Production | 2013-04-02 A |  | 0% → 50% |  |  |  |
| 21 | VTD - Compressed Air Distribution | 2013-04-02 A |  | 0% → 50% |  |  |  |
| 23 | VTD - Manage the pantographs (Desk control) | 2013-03-29 A |  | 0% → 75% | 63.57d → 64d |  |  |
| 24 | VTD - Grounding of the locomotive | 2013-04-01 A |  | 0% → 75% |  |  |  |
| 27 | VTD - Broadcast the time | 2013-04-01 A |  | 0% → 75% |  |  |  |
| 34 | STR3 - RUN - Manage km-meter and operating times | 2013-04-17 → 2013-04-12 (-5d) | 2013-04-17 → 2013-04-12 (-5d) |  | 52d → 55d |  | constraint start no earlier than 2013-04-17 → start no earlier than 2013-04-12 |
| 37 | STR3 - RUN - Antislide Protection System (WSP) | 2013-04-09 → 2013-04-10 (+1d) | 2013-04-09 → 2013-04-10 (+1d) |  | 58d → 57d |  | constraint start no earlier than 2013-04-09 → start no earlier than 2013-04-10 |
| 38 | STR3 - RUN - Brake Substitution Control |  |  |  |  | 9, 61 → 9, 62 |  |
| 39 | STR3 - RUN - Management of auxiliary loads contactors | 2013-04-22 → 2013-04-08 (-14d) | 2013-04-23 → 2013-04-09 (-14d) |  | 48d → 58d |  | constraint none → start no earlier than 2013-04-08 |
| 41 | STR3 - RUN - Axle-box bearings temperature control | 2013-04-08 → 2013-04-11 (+3d) | 2013-04-08 → 2013-04-11 (+3d) |  | 59d → 56d |  | constraint start no earlier than 2013-04-08 → start no earlier than 2013-04-11 |
| 43 | STR3 - RUN - Pneumatic brake control | 2013-04-24 → 2013-05-01 (+7d) | 2013-04-26 → 2013-05-03 (+7d) |  | 45d → 40d | 25, 61 → 25, 62 | constraint start no earlier than 2013-04-24 → start no earlier than 2013-05-01 |
| 44 | STR2 - RUN - Develop Driving Orders | 2013-04-10 → 2013-05-06 (+26d) | 2013-04-12 → 2013-05-08 (+26d) |  | 55d → 37d | 14, 59 → 14, 62 | constraint start no earlier than 2013-04-10 → start no earlier than 2013-05-06 |
| 45 | STR2 - RUN - Provision and Management of 110 V Supply | 2013-04-18 → 2013-04-15 (-3d) | 2013-04-19 → 2013-04-16 (-3d) |  | 50d → 53d |  | constraint start no earlier than 2013-04-18 → start no earlier than 2013-04-15 |
| 48 | STR2 - RUN - Parking brake control | 2013-04-15 → 2013-04-17 (+2d) | 2013-04-16 → 2013-04-18 (+2d) |  | 53d → 51d |  | constraint start no earlier than 2013-04-15 → start no earlier than 2013-04-17 |
| 49 | STR2 - RUN - Compressed Air Production | 2013-05-03 → 2013-04-23 (-10d) | 2013-05-06 → 2013-04-24 (-12d) |  | 39d → 47d |  | constraint start no earlier than 2013-05-03 → start no earlier than 2013-04-23 |
| 50 | STR2 - RUN - Manage the high voltage configuration (Desk control) | 2013-05-08 → 2013-05-17 (+9d) | 2013-05-08 → 2013-05-17 (+9d) |  | 37d → 30d |  | constraint start no earlier than 2013-05-08 → start no earlier than 2013-05-17 |
| 51 | STR2 - RUN - Compressed Air Distribution | 2013-05-01 → 2013-04-19 (-12d) | 2013-05-02 → 2013-04-22 (-10d) |  | 41d → 49d |  | constraint start no earlier than 2013-05-01 → start no earlier than 2013-04-19 |
| 55 | STR2 - RUN - Tape operating data | 2013-05-20 → 2013-04-25 (-25d) | 2013-05-20 → 2013-04-25 (-25d) |  | 29d → 46d |  | constraint start no earlier than 2013-05-20 → start no earlier than 2013-04-25 |
| 56 | STR2 - RUN - Broadcast the time | 2013-05-07 → 2013-05-20 (+13d) | 2013-05-07 → 2013-05-20 (+13d) |  | 38d → 29d |  | constraint start no earlier than 2013-05-07 → start no earlier than 2013-05-20 |
| 58 | STR2 - RUN - Administrate locomotive topology (HMI Part) | 2013-05-17 → 2013-04-26 (-21d) | 2013-05-17 → 2013-04-26 (-21d) |  | 30d → 45d |  | constraint start no earlier than 2013-05-17 → start no earlier than 2013-04-26 |
| 61 | 3.1.0 | 2013-04-20 → 2013-04-06 (-14d) | 2013-04-20 → 2013-04-06 (-14d) |  |  |  |  |
